# スケジュール_TWLSystemMenu

Schedule from MS Project, 2008-02-08 to 2008-06-20, A marks actual dates.
莉ｻ螟ｩ蝣よｪ蠑丈ｼ夂､ｾ

## Calendars

- 年中無休: Mon-Sun 08:00-12:00, 13:00-17:00.

## Resources

| Resource | Group |
| --- | --- |
| 宮本昌幸 | RED |
| 大江徹 | RED |
| 中島高伸 | RED |
| 吉岡照幸 | RED |
| 村上豊 | RED |
| 白井達広 | RED |
| 神川洋司 | RED |
| 佐藤雅樹 | RED |
| 三田健太朗 | RED |
| 水口裕基 | RED |
| 赤羽淳平 | RED |
| 西川猛司 | RED |
| 吉田光寿 | RED |
| 喜友名毅 | RED-HARD |
| 安達 洋明 | PSEG1 |
| 稲葉 公崇 | PSEG1 |
| 大島 洋一 | PSEG1 |
| 岡島 学 | PSEG1 |
| 奥畑 亮馬 | PSEG1 |
| 北瀬 裕丈 | PSEG1 |
| 白川 英一 | PSEG1 |
| 清木 昌 | PSEG1 |
| 照井 章生 | PSEG1 |
| 徳永 英治 | PSEG1 |
| 西本 隆 | PSEG1 |
| 橋本 英之 | PSEG1 |
| 畠本 稔 | PSEG1 |
| 廣瀬 和樹 | PSEG1 |
| 安本 吉孝 | PSEG1 |
| 矢田 裕人 | PSEG1 |
| 吉崎 浩二 | PSEG1 |
| Atheros | Atheros |
| BroadOn | BroadOn |
| 遠藤高志 | PSEG2 |
| 松島愛佑 | ＵＩＧ |
| 荒木 勉 | ＵＩＧ |
| 川瀬 智広 | ＵＩＧ |
| 河野裕之 | ＵＩＧ |
| 小野沢祐貴 | ＵＩＧ |
| ネットワーク開発部 | ネ開 |
| 斉藤潤一 | RED-HARD |
| 藤田僚平 |  |
| 総務部 |  |
| 和田 |  |
| 中谷 |  |
| 知財部 |  |
| 桑原雅人 | RED-HARD |
| ？ |  |
| 吉岡 |  |

## Schedule

| ID | WBS | Task | Type | Duration | Start | Finish | Predecessors | Total slack | Free slack | Constraint | Resources | Work |
| --- | --- | --- | --- | --- | --- | --- | --- | --- | --- | --- | --- | --- |
| 1 | 1 | **TS-board 3 納品開始** |  | 30d | 2008-02-13 | 2008-03-13 |  | 99d |  |  |  |  |
| 2 | 1.1 | 先行20台 | milestone | 1d | 2008-02-13 | 2008-02-13 |  | 128d |  | start no earlier than 2008-02-13 |  |  |
| 3 | 1.2 | 380台 | milestone | 1d | 2008-03-13 | 2008-03-13 |  | 99d |  | start no earlier than 2008-03-13 |  |  |
| 4 | 2 | ワーキングモデル(10台 0x01=7台, 0x10=3台)納品予定 | milestone | 1d? | 2008-02-15 | 2008-02-15 |  | 126d |  | start no earlier than 2008-02-15 |  |  |
| 5 | 3 | **IS-TWL-DEBUGGER納品開始** |  | 92d | 2008-03-03 | 2008-06-02 |  | 18d |  |  |  |  |
| 6 | 3.1 | 先行5台 | milestone | 1d | 2008-03-03 | 2008-03-03 |  | 109d |  | start no earlier than 2008-03-03 |  |  |
| 7 | 3.2 | 第一弾100台 | milestone | 1d | 2008-04-14 | 2008-04-14 |  | 67d | 0d | start no earlier than 2008-04-14 |  |  |
| 8 | 3.3 | 第二弾200台 | milestone | 1d | 2008-05-05 | 2008-05-05 |  | 46d |  | start no earlier than 2008-05-05 |  |  |
| 9 | 3.4 | 第三弾300台 | milestone | 1d | 2008-05-20 | 2008-05-20 |  | 31d |  | start no earlier than 2008-05-20 |  |  |
| 10 | 3.5 | 月産500台 | milestone | 1d | 2008-06-02 | 2008-06-02 |  | 18d |  | start no earlier than 2008-06-02 |  |  |
| 11 | 4 | **量産試作納品開始** |  | 116d | 2008-02-26 | 2008-06-20 |  | 0d |  |  |  |  |
| 12 | 4.1 | ミニ量試200台 | milestone | 1d | 2008-02-26 | 2008-02-26 |  | 115d |  | start no earlier than 2008-02-26 |  |  |
| 13 | 4.2 | 量試1 600台 | milestone | 1d | 2008-04-21 | 2008-04-21 |  | 60d |  | start no earlier than 2008-04-21 |  |  |
| 14 | 4.3 | 量試2 600台 | milestone | 1d | 2008-05-23 | 2008-05-23 |  | 28d | 0d | start no earlier than 2008-05-23 |  |  |
| 15 | 4.4 | 量試3 600台 | milestone | 1d | 2008-06-20 | 2008-06-20 |  | 0d |  | start no earlier than 2008-06-20 |  |  |
| 16 | 5 | IS-TWL-CAPTURE試作品納品開始 | milestone | 1d? | 2008-04-01 | 2008-04-01 |  | 80d |  | start no earlier than 2008-04-01 |  |  |
| 18 | 6 | **REDランチャー開発マイルストーン** |  | 66d | 2008-02-08 | 2008-04-13 |  | 68d |  |  |  |  |
| 19 | 6.1 | スタート | milestone | 1d | 2008-02-08 | 2008-02-08 |  | 86d | 2d | start no earlier than 2008-02-08 |  |  |
| 20 | 6.2 | 第1ステップ（2月末） | milestone | 1d | 2008-03-02 | 2008-03-02 |  | 83d | 0d | start no earlier than 2008-03-02 |  |  |
| 21 | 6.3 | 第2ステップ（3月中旬） | milestone | 1d | 2008-03-16 | 2008-03-16 |  | 83d | 0d | start no earlier than 2008-03-16 |  |  |
| 22 | 6.4 | 第3ステップ（3月末） | milestone | 1d | 2008-03-30 | 2008-03-30 |  | 82d | 0d | start no earlier than 2008-03-30 |  |  |
| 23 | 6.5 | 第4ステップ | milestone | 1d | 2008-04-06 | 2008-04-06 |  | 75d |  | start no earlier than 2008-04-06 |  |  |
| 24 | 6.6 | 第5ステップ | milestone | 1d | 2008-04-13 | 2008-04-13 |  | 68d |  | start no earlier than 2008-04-13 |  |  |
| 26 | 7 | 無線モジュール（ファームロード対応版）受領 |  | 25d | 2008-02-11 | 2008-03-16 | 19, 21SF | 97d |  | start no earlier than 2008-02-11 | ？ | 200h |
| 28 | 8 | NANDファーム |  | 25d | 2008-02-11 | 2008-03-16 | 19, 21SF | 97d |  |  | 村上豊 | 200h |

Notes:
- 24: システムメニューデバッグ開始目標日

| ID | WBS | Task | Duration | Start | Finish | Predecessors | Complete | Remaining | Total slack | Free slack | Constraint | Resources | Work | Actual work |
| --- | --- | --- | --- | --- | --- | --- | --- | --- | --- | --- | --- | --- | --- | --- |
| 30 | 9 | **仕様策定** | 51d? | 2008-02-08 A | 2008-03-30 |  | 12% | 44.65d? | 83d |  |  |  | 4736h | 928h |
| 31 | 9.1 | **ランチャー** | 51d? | 2008-02-08 A | 2008-03-30 |  | 13% | 44.37d? | 83d |  |  |  | 4232h | 880h |
| 32 | 9.1.1 | アプリのNintendoロゴ表示 | 8d | 2008-02-11 A | 2008-02-20 A |  | 100% |  |  |  | finish no earlier than 2008-02-20 | 松島愛佑; 三田健太朗; 知財部 | 192h | 192h |
| 33 | 9.1.2 | **EURA表示** | 48d | 2008-02-11 | 2008-03-30 |  |  |  | 83d |  |  |  | 840h |  |
| 34 | 9.1.2.1 | NCL Fix | 15d | 2008-02-11 | 2008-03-02 | 19, 20SF |  |  | 83d | 1d | start no earlier than 2008-02-08 | 三田健太朗; 総務部; 松島愛佑 | 360h |  |
| 35 | 9.1.2.2 | NOA, NOE承認 | 20d | 2008-03-03 | 2008-03-30 | 34, 22SF |  |  | 83d |  | start no earlier than 2008-02-08 | 三田健太朗; 総務部; 松島愛佑 | 480h |  |
| 36 | 9.1.3 | **ペアレンタルコントロール** | 22d? | 2008-02-08 A | 2008-02-29 |  | 11% | 19.65d? | 112d |  |  |  | 128h | 51.2h |
| 37 | 9.1.3.1 | レーティング以外の制御 | 16d | 2008-02-08 A | 2008-02-29 |  | 40% | 9.6d | 112d |  |  | 松島愛佑 | 128h | 51.2h |
| 38 | 9.1.3.2 | 秘密の質問項目 | 22d? | 2008-02-08 | 2008-02-29 |  |  |  | 112d |  | start no earlier than 2008-02-08 |  |  |  |
| 39 | 9.1.3.3 | NOA,NOE承認 | 22d? | 2008-02-08 | 2008-02-29 |  |  |  | 112d |  | start no earlier than 2008-02-08 |  |  |  |
| 40 | 9.1.4 | **本体設定データ** | 20d | 2008-02-11 | 2008-03-02 |  |  |  | 111d |  |  |  | 480h |  |
| 41 | 9.1.4.1 | ペアレンタルコントロール（レーティング以外のデータ構造） | 15d | 2008-02-11 | 2008-03-02 | 19, 20SF |  |  | 111d |  | start no earlier than 2008-02-11 | 松島愛佑; 総務部; 三田健太朗 | 360h |  |
| 42 | 9.1.4.2 | 顔写真 | 15d | 2008-02-11 | 2008-03-02 | 19, 20SF |  |  | 111d |  | start no earlier than 2008-02-08 | 松島愛佑 | 120h |  |
| 43 | 9.1.5 | **NANDファイルアクセス制限** | 34d? | 2008-02-11 | 2008-03-16 |  |  |  | 97d |  |  |  | 1096h |  |
| 44 | 9.1.5.1 | 同一メーカの他タイトルのセーブデータ（ReadOnly） | 25d | 2008-02-11 | 2008-03-16 | 19, 21SF |  |  | 97d |  | finish no earlier than 2008-02-29 | 吉岡照幸 | 200h |  |
| 45 | 9.1.5.2 | TMPブートをする際のTMPフォルダ（Write） | 25d | 2008-02-11 | 2008-03-16 | 19, 21SF |  |  | 97d |  | start no earlier than 2008-02-08 | 吉岡照幸 | 200h |  |
| 46 | 9.1.5.3 | フォントの共有コンテンツ化（ReadOnly） | 25d | 2008-02-11 | 2008-03-16 | 19, 21SF |  |  | 97d |  | start no earlier than 2008-02-08 | 吉岡照幸 | 200h |  |
| 47 | 9.1.5.4 | ESライブラリのほぼ全部アクセス | 25d | 2008-02-11 | 2008-03-16 | 19, 21SF |  |  | 97d |  | start no earlier than 2008-02-08 | 吉岡照幸 | 200h |  |
| 48 | 9.1.5.5 | 本体設定データ（ReadOnly） | 25d | 2008-02-11 | 2008-03-16 | 19, 21SF |  |  | 97d |  | start no earlier than 2008-02-08 | 吉岡照幸 | 200h |  |
| 49 | 9.1.5.6 | shared2の運用方針 | 12d? | 2008-02-14 | 2008-02-29 |  |  |  | 112d |  | finish no earlier than 2008-02-29 | 吉岡照幸 | 96h |  |
| 50 | 9.1.6 | **SDに作成するフォルダ名** | 37d? | 2008-02-08 A | 2008-03-16 |  | 2% | 36.1d? | 97d |  |  |  | 448h | 8h |
| 51 | 9.1.6.1 | TWL正式名称を使えるかを確認 | 25d | 2008-02-11 | 2008-03-16 | 19, 21SF |  |  | 97d |  | start no earlier than 2008-02-08 | 三田健太朗 | 200h |  |
| 52 | 9.1.6.2 | パス名調査 | 1d? | 2008-02-08 A | 2008-02-08 A |  | 100% |  |  |  |  | 白井達広 | 8h | 8h |
| 53 | 9.1.6.3 | TWLでのフォルダ構成のたたき台 | 15d | 2008-02-11 | 2008-03-02 | 19, 20SF |  |  | 111d |  | start no earlier than 2008-02-08 | 三田健太朗; 吉岡照幸 | 240h |  |

| ID | WBS | Task | Duration | Start | Finish | Predecessors | Complete | Remaining | Total slack | Free slack | Constraint | Resources | Work | Actual work |
| --- | --- | --- | --- | --- | --- | --- | --- | --- | --- | --- | --- | --- | --- | --- |
| 54 | 9.1.7 | **NTRアプリのR4対策** | 20d | 2008-02-11 | 2008-03-02 |  |  |  | 111d |  |  |  | 120h |  |
| 55 | 9.1.7.1 | どのレベルでやるかの方針決定 | 15d | 2008-02-11 | 2008-03-02 | 19, 20SF |  |  | 111d |  | start no earlier than 2008-02-08 | ？ | 120h |  |
| 56 | 9.1.8 | **アプリジャンプ** | 23d? | 2008-02-08 | 2008-03-02 |  |  |  | 111d |  |  |  | 168h |  |
| 57 | 9.1.8.1 | ファイル関連付けアプリ起動をやるかやらないか？ | 15d | 2008-02-11 | 2008-03-02 | 19, 20SF |  |  | 111d |  |  | 吉岡照幸 | 120h |  |
| 58 | 9.1.8.2 | TMPブート、メモリブートのNTRアプリ対応 | 5d? | 2008-02-18 | 2008-02-22 |  |  |  | 119d |  | start no earlier than 2008-02-18 | 吉岡照幸 | 40h |  |
| 59 | 9.1.8.3 | NTRモード移行後のHWリセットでは、アプリジャンプを無効にする仕組み | 1d? | 2008-02-08 | 2008-02-08 |  |  |  | 133d |  |  | 吉岡照幸 | 8h |  |
| 60 | 9.1.9 | **バナー仕様** | 8d | 2008-02-08 A | 2008-02-15 A |  | 100% |  |  |  |  |  | 288h | 288h |
| 61 | 9.1.9.1 | TWLバナー | 6d | 2008-02-08 A | 2008-02-15 A | 19, 21SF | 100% |  |  |  |  | 吉岡照幸; 川瀬 智広; 荒木 勉 | 144h | 144h |
| 62 | 9.1.9.2 | サブバナー | 6d | 2008-02-08 A | 2008-02-15 A | 19, 21SF | 100% |  |  |  |  | 吉岡照幸; 川瀬 智広; 荒木 勉 | 144h | 144h |
| 63 | 9.1.10 | **バックライト輝度の値、段階** | 22d? | 2008-02-08 A | 2008-02-29 |  | 72% | 6.16d? | 112d |  |  |  | 344h | 288h |
| 64 | 9.1.10.1 | 上限、下限決定 | 9d | 2008-02-08 A | 2008-02-20 A |  | 100% |  |  |  | start no earlier than 2008-02-08 | 斉藤潤一; 喜友名毅 | 144h | 144h |
| 65 | 9.1.10.2 | 段階数、各輝度レベル決定 | 9d | 2008-02-08 A | 2008-02-20 A |  | 100% |  |  |  | start no earlier than 2008-02-08 | 斉藤潤一; 喜友名毅 | 144h | 144h |
| 66 | 9.1.10.3 | UIG承認 | 7d? | 2008-02-21 | 2008-02-29 | 64, 65 |  |  | 112d |  | start no earlier than 2008-02-21 | 松島愛佑 | 56h |  |
| 67 | 9.1.11 | **バッテリエクステンション** | 22d? | 2008-02-08 A | 2008-02-29 |  | 41% | 12.93d? | 98d | 2d |  |  | 128h | 52.8h |
| 68 | 9.1.11.1 | データ測定 | 11d? | 2008-02-08 A | 2008-02-22 |  | 60% | 4.4d? | 98d | 2d | finish no earlier than 2008-02-22 | 藤田僚平 | 88h | 52.8h |
| 69 | 9.1.11.2 | 仕様策定 | 5d | 2008-02-25 | 2008-02-29 | 68 |  |  | 98d |  | finish no earlier than 2008-02-29 | 桑原雅人 | 40h |  |
| 70 | 9.2 | **ネットワークアップデート** | 16d? | 2008-02-18 | 2008-03-04 |  |  |  | 108d |  |  |  | 96h |  |
| 71 | 9.2.1 | ゲームバージョンの運用方法 | 12d? | 2008-02-18 | 2008-03-04 |  |  |  | 108d |  | start no earlier than 2008-02-18 | 廣瀬 和樹 | 96h |  |
| 72 | 9.3 | **無線** | 23d? | 2008-02-08 A | 2008-03-02 |  | 12% | 20.29d? | 111d |  |  |  | 408h | 48h |
| 73 | 9.3.1 | WiFiエミュレーション | 15d | 2008-02-11 | 2008-03-02 | 19, 20SF |  |  | 111d |  |  | 大江徹; 佐藤雅樹; 水口裕基 | 360h |  |
| 74 | 9.3.2 | ファームロード | 1d? | 2008-02-08 A | 2008-02-08 A |  | 100% |  |  |  |  | 大江徹; 佐藤雅樹; 水口裕基 | 24h | 24h |
| 75 | 9.3.3 | 無線終端処理 | 1d? | 2008-02-08 A | 2008-02-08 A |  | 100% |  |  |  |  | 大江徹; 佐藤雅樹; 水口裕基 | 24h | 24h |
| 76 | 9.4 | **ISデバッガ** | 1d? | 2008-02-08 | 2008-02-08 |  |  |  | 133d |  |  |  |  |  |
| 77 | 9.4.1 | 開発マイルストーンをまとめる | 1d? | 2008-02-08 | 2008-02-08 |  |  |  | 133d |  |  |  |  |  |
| 78 | 9.4.2 | 開発用カード、製品用カード動作をどのように対応するか？ | 1d? | 2008-02-08 | 2008-02-08 |  |  |  | 133d |  |  |  |  |  |
| 79 | 9.4.3 | デバッガ、キャプチャで、開発用SRL、製品用SRLをどのように動作させるか？ | 1d? | 2008-02-08 | 2008-02-08 |  |  |  | 133d |  |  |  |  |  |
| 80 | 9.4.4 | システムアップデートをどのようにサポートするか？ | 1d? | 2008-02-08 | 2008-02-08 |  |  |  | 133d |  |  |  |  |  |
| 81 | 9.4.5 | NANDアプリインポート方法（NMenuのみに制限？） | 1d? | 2008-02-08 | 2008-02-08 |  |  |  | 133d |  |  |  |  |  |

| ID | WBS | Task | Duration | Start | Finish | Predecessors | Complete | Remaining | Total slack | Free slack | Constraint | Resources | Work | Actual work |
| --- | --- | --- | --- | --- | --- | --- | --- | --- | --- | --- | --- | --- | --- | --- |
| 83 | 10 | **X3ボード対応** | 20d | 2008-02-11 A | 2008-03-02 |  | 30% | 14d | 111d |  |  |  | 240h | 72h |
| 84 | 10.1 | ランチャー | 15d | 2008-02-11 A | 2008-03-02 | 19, 20SF | 30% | 10.5d | 111d |  | finish no earlier than 2008-02-18 | 中島高伸 | 120h | 36h |
| 85 | 10.2 | ISデバッガ | 15d | 2008-02-11 A | 2008-03-02 | 19, 20SF | 30% | 10.5d | 111d |  | finish no earlier than 2008-02-18 | 中島高伸 | 120h | 36h |
| 87 | 11 | **REDシステムメニュー** | 67d? | 2008-02-08 A | 2008-04-14 |  | 25% | 50.34d? | 67d |  |  |  | 9824h | 2450.4h |
| 88 | 11.1 | **ランチャー** | 67d? | 2008-02-08 A | 2008-04-14 |  | 24% | 51.13d? | 67d |  |  |  | 9440h | 2252h |
| 89 | 11.1.1 | ランチャー用ARM7コンポーネント | 25d | 2008-02-11 A | 2008-03-16 | 19, 21SF | 50% | 12.5d | 97d |  | start no earlier than 2008-02-08 | 吉岡照幸 | 200h | 100h |
| 90 | 11.1.2 | **アプリ起動** | 48d? | 2008-02-11 A | 2008-03-30 |  | 25% | 36.23d? | 83d |  |  |  | 3120h | 716h |
| 91 | 11.1.2.1 | **起動時処理** | 33d? | 2008-02-11 A | 2008-03-14 |  | 39% | 20.21d? | 98d |  |  |  | 1480h | 496h |
| 92 | 11.1.2.1.1 | 鍵の引渡し | 15d | 2008-02-11 | 2008-03-02 | 19, 20SF |  |  | 111d |  |  | 吉田光寿 | 120h |  |
| 93 | 11.1.2.1.2 | NANDファイルのアクセス制限 | 15d | 2008-02-11 A | 2008-03-02 | 19, 20SF | 50% | 7.5d | 111d |  |  | 吉岡照幸 | 120h | 60h |
| 94 | 11.1.2.1.3 | カード電源状態 | 15d | 2008-02-11 | 2008-03-02 | 19, 20SF |  |  | 111d |  |  | 赤羽淳平 | 120h |  |
| 95 | 11.1.2.1.4 | カード活線挿抜可否 | 15d | 2008-02-11 | 2008-03-02 | 19, 20SF |  |  | 111d |  |  | 中島高伸 | 120h |  |
| 96 | 11.1.2.1.5 | SDカードアクセス可否 | 15d | 2008-02-11 A | 2008-03-02 | 19, 20SF | 50% | 7.5d | 111d |  |  | 中島高伸 | 120h | 60h |
| 97 | 11.1.2.1.6 | Codecモード切替 | 15d | 2008-02-11 A | 2008-03-02 A | 19, 20SF | 100% |  |  |  |  | 中島高伸 | 120h | 120h |
| 98 | 11.1.2.1.7 | SCFGレジスタロック（ユーザーアプリは必ず） | 15d | 2008-02-11 A | 2008-03-02 A | 19, 20SF | 100% |  |  |  |  | 中島高伸 | 120h | 120h |
| 99 | 11.1.2.1.8 | アプリ再配置 | 15d | 2008-02-11 A | 2008-03-02 A | 19, 20SF | 100% |  |  |  |  | 吉田光寿 | 120h | 120h |
| 100 | 11.1.2.1.9 | メモリクリア | 15d | 2008-02-11 | 2008-03-02 | 19, 20SF |  |  | 111d | 14d |  | 中島高伸; 吉田光寿 | 240h |  |
| 101 | 11.1.2.1.10 | 速度チューニング | 10d? | 2008-03-03 | 2008-03-14 |  |  |  | 98d |  | start no earlier than 2008-03-03 | 吉田光寿; 村上豊 | 160h |  |
| 102 | 11.1.2.1.11 | **レジスタクリア** | 20d | 2008-02-11 A | 2008-03-02 |  | 13% | 17.33d | 111d | 14d |  |  | 120h | 16h |
| 103 | 11.1.2.1.11.1 | 各ハード担当者にクリアする領域を洗い出してもらう | 10d | 2008-02-11 A | 2008-02-22 | 19 | 20% | 8d | 112d | 2d | start no earlier than 2008-02-08 | 吉岡照幸 | 80h | 16h |
| 104 | 11.1.2.1.11.2 | クリア処理実装 | 5d | 2008-02-25 | 2008-03-02 | 103, 20SF |  |  | 111d |  |  | 中島高伸 | 40h |  |
| 105 | 11.1.2.2 | **起動チェック** | 34d | 2008-02-11 | 2008-03-16 |  |  |  | 97d |  |  |  | 200h |  |
| 106 | 11.1.2.2.1 | **AGBカートリッジが必要なソフトは起動禁止** | 34d | 2008-02-11 | 2008-03-16 |  |  |  | 97d |  |  |  | 200h |  |
| 107 | 11.1.2.2.1.1 | 該当ソフト調査 | 20d | 2008-02-11 | 2008-03-07 | 19 |  |  | 98d | 2d |  | 三田健太朗 | 160h |  |
| 108 | 11.1.2.2.1.2 | チェックルーチン | 5d | 2008-03-10 | 2008-03-16 | 107, 21SF |  |  | 97d |  |  | 吉田光寿 | 40h |  |

| ID | WBS | Task | Duration | Start | Finish | Predecessors | Complete | Remaining | Total slack | Constraint | Resources | Work | Actual work |
| --- | --- | --- | --- | --- | --- | --- | --- | --- | --- | --- | --- | --- | --- |
| 109 | 11.1.2.3 | **アプリ認証処理** | 48d? | 2008-02-11 A | 2008-03-30 |  | 12% | 42.46d? | 83d |  |  | 1040h | 120h |
| 110 | 11.1.2.3.1 | **NTRアプリのR4対策** | 48d | 2008-02-11 | 2008-03-30 |  |  |  | 83d |  |  | 560h |  |
| 111 | 11.1.2.3.1.1 | **ダイジェストとるやつ** | 48d | 2008-02-11 | 2008-03-30 |  |  |  | 83d |  |  | 560h |  |
| 112 | 11.1.2.3.1.1.1 | TWL側実装 | 35d | 2008-02-11 | 2008-03-30 | 19, 22SF |  |  | 83d |  | 村上豊 | 280h |  |
| 113 | 11.1.2.3.1.1.2 | ダイジェストリスト作成 | 35d | 2008-02-11 | 2008-03-30 | 19, 22SF |  |  | 83d |  | 村上豊 | 280h |  |
| 114 | 11.1.2.3.2 | **TWLアプリ** | 33d? | 2008-02-11 A | 2008-03-14 |  | 25% | 24.75d? | 98d |  |  | 480h | 120h |
| 115 | 11.1.2.3.2.1 | カードアプリ | 15d | 2008-02-11 A | 2008-03-02 | 19, 20SF | 50% | 7.5d | 111d | finish no earlier than 2008-02-22 | 吉田光寿 | 120h | 60h |
| 116 | 11.1.2.3.2.2 | NANDアプリ | 15d | 2008-02-11 A | 2008-03-02 | 19, 20SF | 50% | 7.5d | 111d | finish no earlier than 2008-02-22 | 吉田光寿 | 120h | 60h |
| 117 | 11.1.2.3.2.3 | TMPブートアプリ | 10d? | 2008-02-18 | 2008-03-02 | 19, 20SF |  |  | 110d | finish no earlier than 2008-03-02 | 吉田光寿 | 80h |  |
| 118 | 11.1.2.3.2.4 | NTRアプリ | 20d? | 2008-02-18 | 2008-03-14 | 19, 20SF |  |  | 98d | finish no earlier than 2008-03-14 | 吉田光寿 | 160h |  |
| 119 | 11.1.2.4 | **NTRアプリ起動** | 34d | 2008-02-11 A | 2008-03-16 |  | 25% | 25.5d | 97d |  |  | 400h | 100h |
| 120 | 11.1.2.4.1 | NTRモード切替 | 25d | 2008-02-11 A | 2008-03-16 | 100FF, 102FF, 21SF | 50% | 12.5d | 97d |  | 中島高伸 | 200h | 100h |
| 121 | 11.1.2.4.2 | NTR無線パッチ | 25d | 2008-02-11 | 2008-03-16 | 19, 21SF |  |  | 97d | start no earlier than 2008-02-08 | 中島高伸 | 200h |  |
| 122 | 11.1.3 | **アプリジャンプ** | 20d | 2008-02-11 A | 2008-03-02 |  | 93% | 1.33d | 111d |  |  | 360h | 336h |
| 123 | 11.1.3.1 | **任意アプリの直接起動** | 20d | 2008-02-11 A | 2008-03-02 |  | 90% | 2d | 111d |  |  | 240h | 216h |
| 124 | 11.1.3.1.1 | 未ロード状態のアプリ起動 | 15d | 2008-02-11 A | 2008-03-02 A | 19, 20SF | 100% |  |  |  | 吉田光寿 | 120h | 120h |
| 125 | 11.1.3.1.2 | NANDのTMPフォルダに一時格納された状態のアプリ起動 | 15d | 2008-02-11 A | 2008-03-02 | 19, 20SF | 80% | 3d | 111d |  | 吉田光寿 | 120h | 96h |
| 126 | 11.1.3.2 | ランチャーメニューに戻る | 15d | 2008-02-11 A | 2008-03-02 A | 19, 20SF | 100% |  |  |  | 吉田光寿 | 120h | 120h |
| 127 | 11.1.4 | Hot/Coldスタート判定 | 15d | 2008-02-11 A | 2008-03-02 | 19, 20SF | 80% | 3d | 111d |  | 中島高伸; 吉田光寿 | 240h | 192h |
| 128 | 11.1.5 | TMPフォルダクリーン | 15d | 2008-02-11 A | 2008-03-02 | 19, 20SF | 50% | 7.5d | 111d |  | 吉田光寿 | 120h | 60h |
| 129 | 11.1.6 | 本体設定データetcのロード | 15d | 2008-02-11 A | 2008-03-02 | 19, 20SF | 80% | 3d | 111d |  | 吉岡照幸 | 120h | 96h |
| 130 | 11.1.7 | RTC初期化 | 15d | 2008-02-11 A | 2008-03-02 | 19, 20SF | 80% | 3d | 111d |  | 吉岡照幸 | 120h | 96h |
| 131 | 11.1.8 | 初回バックライトON | 15d | 2008-02-11 | 2008-03-02 | 19, 20SF |  |  | 111d |  | 吉岡照幸 | 120h |  |
| 132 | 11.1.9 | **無線** | 51d? | 2008-02-08 A | 2008-03-30 |  | 1% | 50.65d? | 83d |  |  | 1176h | 8h |
| 133 | 11.1.9.1 | **新無線ファームロード** | 43d? | 2008-02-08 A | 2008-03-21 |  | 2% | 42.17d? | 91d |  |  | 416h | 8h |
| 134 | 11.1.9.1.1 | ダミーROMヘッダ作成ツール | 1d | 2008-02-08 A | 2008-02-08 A |  | 100% |  |  |  | 宮本昌幸 | 8h | 8h |

| ID | WBS | Task | Duration | Start | Finish | Predecessors | Complete | Remaining | Total slack | Free slack | Constraint | Resources | Work | Actual work |
| --- | --- | --- | --- | --- | --- | --- | --- | --- | --- | --- | --- | --- | --- | --- |
| 135 | 11.1.9.1.2 | **ファーム** | 27d? | 2008-02-08 | 2008-03-05 |  |  |  | 107d |  |  |  | 152h |  |
| 136 | 11.1.9.1.2.1 | ファーム作成 | 19d? | 2008-02-08 | 2008-03-05 |  |  |  | 107d |  | finish no earlier than 2008-03-05 | Atheros | 152h |  |
| 137 | 11.1.9.1.3 | **実装** | 43d? | 2008-02-08 | 2008-03-21 |  |  |  | 91d |  |  |  | 256h |  |
| 138 | 11.1.9.1.3.1 | 無線ライブラリ | 12d? | 2008-02-08 | 2008-02-25 |  |  |  | 116d |  | start no earlier than 2008-02-08 | 佐藤雅樹 | 96h |  |
| 139 | 11.1.9.1.3.2 | ランチャー仮実装 | 15d | 2008-02-11 | 2008-03-02 | 19, 20SF |  |  | 111d |  | start no earlier than 2008-02-08 | 宮本昌幸 | 120h |  |
| 140 | 11.1.9.1.3.3 | ランチャー本実装 | 5d? | 2008-03-17 | 2008-03-21 | 204 |  |  | 91d |  | start no earlier than 2008-03-10 | 宮本昌幸 | 40h |  |
| 141 | 11.1.9.2 | **WiFiエミュレーション** | 48d | 2008-02-11 | 2008-03-30 |  |  |  | 83d |  |  |  | 560h |  |
| 142 | 11.1.9.2.1 | コンポーネント作成 | 35d | 2008-02-11 | 2008-03-30 | 19, 22SF |  |  | 83d |  |  | 水口裕基 | 280h |  |
| 143 | 11.1.9.2.2 | ロード処理 | 35d | 2008-02-11 | 2008-03-30 | 19, 22SF |  |  | 83d |  |  | 水口裕基 | 280h |  |
| 144 | 11.1.9.3 | 無線終端処理 | 25d | 2008-02-11 | 2008-03-16 | 19, 21SF |  |  | 97d |  |  | 佐藤雅樹 | 200h |  |
| 145 | 11.1.10 | アプリリスト取得 | 15d | 2008-02-11 A | 2008-03-02 | 19, 20SF | 70% | 4.5d | 111d |  |  | 吉田光寿 | 120h | 84h |
| 146 | 11.1.11 | **バナー** | 33d? | 2008-02-11 A | 2008-03-14 |  | 57% | 14.04d? | 98d |  |  |  | 496h | 324h |
| 147 | 11.1.11.1 | バナードライバ | 15d | 2008-02-11 A | 2008-03-02 | 19, 20SF | 90% | 1.5d | 111d |  |  | 吉田光寿 | 120h | 108h |
| 148 | 11.1.11.2 | セーブバナー | 17d? | 2008-02-21 | 2008-03-14 |  |  |  | 98d |  | start no earlier than 2008-02-21 | 吉田光寿 | 136h |  |
| 149 | 11.1.11.3 | サブバナーファイル（FSレイヤ） | 15d | 2008-02-11 A | 2008-03-02 | 19, 20SF | 90% | 1.5d | 111d |  |  | 畠本 稔; 吉崎 浩二 | 240h | 216h |
| 150 | 11.1.12 | **活線挿抜** | 23d? | 2008-02-08 A | 2008-03-02 |  | 18% | 18.87d? | 99d |  |  |  | 1440h | 240h |
| 151 | 11.1.12.1 | **活線挿抜アルゴリズムをFIX** | 20d | 2008-02-11 | 2008-03-02 |  |  |  | 97d | 1d |  |  | 240h |  |
| 152 | 11.1.12.1.1 | コードの整理 | 15d | 2008-02-11 | 2008-03-02 | 19, 20SF |  |  | 97d |  | start no earlier than 2008-02-08 | 赤羽淳平 | 120h |  |
| 153 | 11.1.12.1.2 | 挿抜負荷耐性 | 15d | 2008-02-11 | 2008-03-02 | 19, 20SF |  |  | 97d |  | finish no earlier than 2008-02-29 | 赤羽淳平 | 120h |  |
| 154 | 11.1.12.2 | **ロード** | 23d? | 2008-02-08 A | 2008-03-02 |  | 22% | 17.96d? | 99d | 1d |  |  | 1200h | 240h |
| 155 | 11.1.12.2.1 | NTRカード対応 | 15d | 2008-02-11 A | 2008-03-02 A | 19, 20SF | 100% |  |  |  |  | 赤羽淳平 | 120h | 120h |
| 156 | 11.1.12.2.2 | TWLカード対応 | 15d | 2008-02-11 | 2008-03-02 | 19, 20SF |  |  | 97d |  | finish no earlier than 2008-02-29 | 赤羽淳平 | 120h |  |
| 157 | 11.1.12.2.3 | カードType1,Type2対応 | 15d | 2008-02-11 | 2008-03-02 | 19, 20SF |  |  | 97d |  | finish no earlier than 2008-02-29 | 赤羽淳平 | 120h |  |
| 158 | 11.1.12.2.4 | **Blowfishデコード** | 20d | 2008-02-11 A | 2008-03-02 |  | 50% | 10d | 97d |  |  |  | 240h | 120h |
| 159 | 11.1.12.2.4.1 | SRLの先頭2KB | 15d | 2008-02-11 A | 2008-03-02 A | 19, 20SF | 100% |  |  |  |  | 赤羽淳平 | 120h | 120h |
| 160 | 11.1.12.2.4.2 | カードのコマンド処理 | 15d | 2008-02-11 | 2008-03-02 | 19, 20SF |  |  | 97d |  | finish no earlier than 2008-02-29 | 赤羽淳平 | 120h |  |

| ID | WBS | Task | Duration | Start | Finish | Predecessors | Total slack | Free slack | Constraint | Resources | Work |
| --- | --- | --- | --- | --- | --- | --- | --- | --- | --- | --- | --- |
| 161 | 11.1.12.2.5 | **AESデコード** | 1d? | 2008-02-08 | 2008-02-08 |  | 121d |  |  |  |  |
| 162 | 11.1.12.2.5.1 | 鍵のセット | 1d? | 2008-02-08 | 2008-02-08 |  | 121d |  |  |  |  |
| 163 | 11.1.12.2.5.2 | ARM9.Ltd.staticの先頭16KB | 1d? | 2008-02-08 | 2008-02-08 |  | 121d |  |  |  |  |
| 164 | 11.1.12.2.6 | **カードスロットAでの動作** | 20d | 2008-02-11 | 2008-03-02 |  | 97d |  |  |  | 120h |
| 165 | 11.1.12.2.6.1 | SDKコードとのカードアクセス排他制御 | 15d | 2008-02-11 | 2008-03-02 | 19, 20SF | 97d |  | start no earlier than 2008-02-08 | 赤羽淳平 | 120h |
| 166 | 11.1.12.2.7 | Blowfish鍵の受け渡し | 15d | 2008-02-11 | 2008-03-02 | 19, 20SF | 97d |  | start no earlier than 2008-02-08 | 中島高伸; 赤羽淳平 | 240h |
| 167 | 11.1.12.2.8 | 表示との連動 | 15d | 2008-02-11 | 2008-03-02 | 19, 20SF | 97d |  | start no earlier than 2008-02-08 | 赤羽淳平 | 120h |
| 168 | 11.1.12.2.9 | 起動との連動 | 15d | 2008-02-11 | 2008-03-02 | 19, 20SF | 97d |  | start no earlier than 2008-02-08 | 赤羽淳平 | 120h |
| 169 | 11.1.13 | ARM9/ARM7対応 | 10d | 2008-03-03 | 2008-03-16 | 151, 154, 21SF | 97d |  | finish no earlier than 2008-02-29 | 赤羽淳平 | 80h |
| 170 | 11.1.14 | 速度チューニング | 10d | 2008-03-03 | 2008-03-16 | 151, 154, 21SF | 97d |  | finish no earlier than 2008-02-29 | 赤羽淳平 | 80h |
| 171 | 11.1.15 | **ホットスポットサーチ** | 20d | 2008-02-11 | 2008-03-02 |  | 111d |  |  |  | 120h |
| 172 | 11.1.15.1 | ライブラリ作成 | 10d | 2008-02-11 | 2008-02-22 | 19 | 112d | 2d | start no earlier than 2008-02-08 | ネットワーク開発部 | 80h |
| 173 | 11.1.15.2 | ランチャーへの組み込み | 5d | 2008-02-25 | 2008-03-02 | 172, 20SF | 111d |  |  | 吉田光寿 | 40h |
| 174 | 11.1.16 | バッテリエクステンション | 10d | 2008-03-03 | 2008-03-16 | 67, 21SF | 97d |  | finish no earlier than 2008-02-29 | 村上豊 | 80h |
| 175 | 11.1.17 | **ISデバッガ対応** | 67d? | 2008-02-08 | 2008-04-14 |  | 67d |  |  |  | 1448h |
| 176 | 11.1.17.1 | 開発サポート | 46d | 2008-02-11 | 2008-04-14 | 7FF | 67d |  | finish no earlier than 2008-03-13 | 中島高伸 | 368h |
| 177 | 11.1.17.2 | 安定度を上げる | 15d | 2008-02-11 | 2008-03-02 | 19, 20SF | 111d |  | start no earlier than 2008-02-08 | 中島高伸 | 120h |
| 178 | 11.1.17.3 | ハードウェアリセット対応 | 25d | 2008-02-11 | 2008-03-16 | 19, 21SF | 97d |  | finish no earlier than 2008-02-29 | 吉岡照幸 | 200h |
| 179 | 11.1.17.4 | NANDファイルシステム終了処理 | 1d? | 2008-02-08 | 2008-02-08 |  | 133d |  |  |  |  |
| 180 | 11.1.17.5 | NTRモードデバッグ | 25d | 2008-02-11 | 2008-03-16 | 19, 21SF | 97d |  | start no earlier than 2008-02-08 | 中島高伸 | 200h |
| 181 | 11.1.17.6 | TWL-HYBアプリのNTRモードデバッグ | 1d? | 2008-02-08 | 2008-02-08 |  | 133d |  |  |  |  |
| 182 | 11.1.17.7 | バナーViewモード対応 | 1d? | 2008-02-08 | 2008-02-08 |  | 133d |  |  |  |  |
| 183 | 11.1.17.8 | TLFモードフラグ対応（署名やAESチェックを無効にする） | 1d? | 2008-02-08 | 2008-02-08 |  | 133d |  |  |  |  |
| 184 | 11.1.17.9 | **NANDアプリデバッグ** | 48d | 2008-02-11 | 2008-03-30 |  | 83d |  |  |  | 560h |
| 185 | 11.1.17.9.1 | 暫定対応 | 25d | 2008-02-11 | 2008-03-16 | 19, 21SF | 83d | 1d |  | 中島高伸; 吉岡照幸 | 400h |
| 186 | 11.1.17.9.2 | 本対応 | 10d | 2008-03-17 | 2008-03-30 | 185, 22SF | 83d |  |  | 中島高伸; 吉岡照幸 | 160h |

| ID | WBS | Task | Duration | Start | Finish | Predecessors | Complete | Remaining | Total slack | Free slack | Constraint | Resources | Work | Actual work |
| --- | --- | --- | --- | --- | --- | --- | --- | --- | --- | --- | --- | --- | --- | --- |
| 187 | 11.2 | **本体設定** | 36d? | 2008-02-08 A | 2008-03-14 |  | 52% | 17.4d? | 98d |  |  |  | 384h | 198.4h |
| 188 | 11.2.1 | 実装 | 1d? | 2008-02-08 A | 2008-02-08 |  | 80% | 0.2d? | 133d |  |  | 吉田光寿 | 8h | 6.4h |
| 189 | 11.2.2 | ペアレンタルコントロール設定 | 17d? | 2008-02-21 | 2008-03-14 |  |  |  | 98d |  | finish no earlier than 2008-03-14 | 西川猛司 | 136h |  |
| 190 | 11.2.3 | **本体初期化** | 20d | 2008-02-11 A | 2008-03-02 |  | 80% | 4d | 111d |  |  |  | 240h | 192h |
| 191 | 11.2.3.1 | ツール（NandInitializer） | 15d | 2008-02-11 A | 2008-03-02 | 19, 20SF | 80% | 3d | 111d |  |  | 神川洋司 | 120h | 96h |
| 192 | 11.2.3.2 | ライブラリ | 15d | 2008-02-11 A | 2008-03-02 | 19, 20SF | 80% | 3d | 111d |  |  | 神川洋司 | 120h | 96h |
| 194 | 12 | **TwlSDK** | 37d? | 2008-02-08 A | 2008-03-16 |  | 15% | 31.61d? | 97d |  |  |  | 3568h | 432h |
| 195 | 12.1 | **ツール** | 37d? | 2008-02-08 A | 2008-03-16 |  | 4% | 35.47d? | 97d |  |  |  | 968h | 40h |
| 196 | 12.1.1 | **makerom.TWL** | 23d? | 2008-02-08 | 2008-03-02 |  |  |  | 111d |  |  |  | 728h |  |
| 197 | 12.1.1.1 | 領域のワーニング修正 | 15d | 2008-02-11 | 2008-03-02 | 19, 20SF |  |  | 111d |  |  | 吉岡照幸 | 120h |  |
| 198 | 12.1.1.2 | TWL領域用キーテーブル埋め込み | 15d | 2008-02-11 | 2008-03-02 | 19, 20SF |  |  | 111d |  |  | 吉岡照幸 | 120h |  |
| 199 | 12.1.1.3 | NTR署名対応 | 15d | 2008-02-11 | 2008-03-02 | 19, 20SF |  |  | 111d |  |  | 吉岡照幸 | 120h |  |
| 200 | 12.1.1.4 | ペアレンタルコントロール対応 | 15d | 2008-02-11 | 2008-03-02 | 19, 20SF |  |  | 111d |  |  | 吉岡照幸 | 120h |  |
| 201 | 12.1.1.5 | SD使用可能特別版対応 | 15d | 2008-02-11 | 2008-03-02 | 19, 20SF |  |  | 111d |  |  | 吉岡照幸 | 120h |  |
| 202 | 12.1.1.6 | システム/ショップアプリ開発特別版対応 | 15d | 2008-02-11 | 2008-03-02 | 19, 20SF |  |  | 111d |  |  | 吉岡照幸 | 120h |  |
| 203 | 12.1.1.7 | TMPブート対応ビットの新設 | 1d? | 2008-02-08 | 2008-02-08 |  |  |  | 133d |  |  | 吉岡照幸 | 8h |  |
| 204 | 12.1.2 | **maketad** | 34d | 2008-02-11 | 2008-03-16 |  |  |  | 90d | 1d |  |  | 200h |  |
| 205 | 12.1.2.1 | バイナリファイル対応 | 25d | 2008-02-11 | 2008-03-16 | 19, 21SF |  |  | 90d |  |  | 大島 洋一 | 200h |  |
| 206 | 12.1.3 | **makebanner.TWL** | 6d | 2008-02-08 A | 2008-02-13 A |  | 100% |  |  |  |  |  | 32h | 32h |
| 207 | 12.1.3.1 | NTRアイコンIN→TWLバナーOUT対応 | 4d | 2008-02-08 A | 2008-02-13 A | 19, 20SF | 100% |  |  |  |  | 吉岡照幸 | 32h | 32h |
| 208 | 12.1.4 | bannercvtr | 1d | 2008-02-08 A | 2008-02-08 A | 19, 21SF | 100% |  |  |  |  | 遠藤高志 | 8h | 8h |
| 209 | 12.2 | **ライブラリ** | 34d | 2008-02-11 A | 2008-03-16 |  | 20% | 27.34d | 97d |  |  |  | 2600h | 392h |
| 210 | 12.2.1 | reboot | 15d | 2008-02-11 A | 2008-03-02 | 19, 20SF | 50% | 7.5d | 111d |  |  | 中島高伸 | 120h | 60h |
| 211 | 12.2.2 | os/launcherParam | 15d | 2008-02-11 A | 2008-03-02 | 19, 20SF | 80% | 3d | 111d |  |  | 吉田光寿 | 120h | 96h |
| 212 | 12.2.3 | lcfg | 15d | 2008-02-11 A | 2008-03-02 | 19, 20SF | 80% | 3d | 111d |  |  | 吉岡照幸 | 120h | 96h |
| 213 | 12.2.4 | nam | 25d | 2008-02-11 A | 2008-03-16 | 19, 21SF | 70% | 7.5d | 97d |  |  | 畠本 稔 | 200h | 140h |
| 214 | 12.2.5 | マイコン | 15d | 2008-02-11 | 2008-03-02 | 19, 20SF |  |  | 111d |  |  | 村上豊 | 120h |  |
| 215 | 12.2.6 | カメラ | 25d | 2008-02-11 | 2008-03-16 | 19, 21SF |  |  | 97d |  |  | 村上豊 | 200h |  |
| 216 | 12.2.7 | Codec | 15d | 2008-02-11 | 2008-03-02 | 19, 20SF |  |  | 111d |  |  | 神川洋司 | 120h |  |

| ID | WBS | Task | Duration | Start | Finish | Predecessors | Complete | Remaining | Total slack | Free slack | Constraint | Resources | Work | Actual work |
| --- | --- | --- | --- | --- | --- | --- | --- | --- | --- | --- | --- | --- | --- | --- |
| 217 | 12.2.8 | **FS** | 34d | 2008-02-11 | 2008-03-16 |  |  |  | 97d |  |  |  | 1600h |  |
| 218 | 12.2.8.1 | 電源OFF,リセット時の終端処理 | 25d | 2008-02-11 | 2008-03-16 | 19, 21SF |  |  | 97d |  |  | 白井達広 | 200h |  |
| 219 | 12.2.8.2 | FSのAES暗号化 | 25d | 2008-02-11 | 2008-03-16 | 19, 21SF |  |  | 97d |  |  | 白井達広; 村上豊 | 400h |  |
| 220 | 12.2.8.3 | 速度チューニング | 25d | 2008-02-11 | 2008-03-16 | 19, 21SF |  |  | 97d |  |  | 吉崎 浩二 | 200h |  |
| 221 | 12.2.8.4 | SRLのハッシュチェック | 25d | 2008-02-11 | 2008-03-16 | 19, 21SF |  |  | 97d |  |  | 吉崎 浩二 | 200h |  |
| 222 | 12.2.8.5 | NANDアクセス権管理 | 25d | 2008-02-11 | 2008-03-16 | 19, 21SF |  |  | 97d |  |  | 吉崎 浩二; 吉岡照幸; 廣瀬 和樹 | 600h |  |
| 224 | 13 | **WiFi関係ライブラリ** | 29d? | 2008-02-08 A | 2008-03-07 |  | 35% | 18.85d? | 105d |  |  |  | 288h | 84h |
| 225 | 13.1 | TwlDWC？ | 1d? | 2008-02-08 | 2008-02-08 |  |  |  | 133d |  |  |  |  |  |
| 226 | 13.2 | ACライブラリ | 21d? | 2008-02-08 A | 2008-03-07 |  | 50% | 10.5d? | 21d | 0d | start no earlier than 2008-02-08 | ネットワーク開発部 | 168h | 84h |
| 227 | 13.3 | WiFi設定移行 | 1d? | 2008-02-08 | 2008-02-08 |  |  |  | 49d | 28d |  | ネットワーク開発部 | 8h |  |
| 228 | 13.4 | WiFi設定ユーティリティ | 7d? | 2008-02-08 | 2008-02-18 |  |  |  | 123d |  | start no earlier than 2008-02-08 | 安達 洋明; 清木 昌 | 112h |  |
| 230 | 14 | **eTicket** | 48d? | 2008-02-11 | 2008-03-30 |  |  |  | 83d |  |  |  | 1216h |  |
| 231 | 14.1 | ESライブラリ | 26d | 2008-02-11 | 2008-03-17 | 19, 21SF |  |  | 95d |  | finish no earlier than 2008-03-14 | BroadOn | 208h |  |
| 232 | 14.2 | NUPライブラリ | 26d? | 2008-02-11 | 2008-03-17 | 19, 21SF |  |  | 95d |  | finish no earlier than 2008-03-14 | BroadOn | 208h |  |
| 233 | 14.3 | **CLSサーバ** | 48d | 2008-02-11 | 2008-03-30 |  |  |  | 83d |  |  |  | 400h |  |
| 234 | 14.3.1 | 開発用セットアップ | 15d | 2008-02-11 | 2008-03-02 | 19, 20SF |  |  | 111d |  |  | 畠本 稔 | 120h |  |
| 235 | 14.3.2 | 製品用セットアップ | 35d | 2008-02-11 | 2008-03-30 | 19, 22SF |  |  | 83d |  |  | 畠本 稔 | 280h |  |
| 236 | 14.4 | **NUPサーバ** | 48d | 2008-02-11 | 2008-03-30 |  |  |  | 83d |  |  |  | 400h |  |
| 237 | 14.4.1 | 開発用セットアップ | 15d | 2008-02-11 | 2008-03-02 | 19, 20SF |  |  | 111d |  |  | ネットワーク開発部 | 120h |  |
| 238 | 14.4.2 | 製品用セットアップ | 35d | 2008-02-11 | 2008-03-30 | 19, 22SF |  |  | 83d |  |  | ネットワーク開発部 | 280h |  |
| 240 | 15 | **UIGシステムメニュー** | 112d? | 2008-02-08 | 2008-05-29 |  |  |  | 22d |  |  |  | 6248h |  |
| 241 | 15.1 | 仕様策定 | 1d? | 2008-02-08 | 2008-02-08 |  |  |  | 133d |  |  | 松島愛佑 | 8h |  |
| 242 | 15.2 | フォント | 1d? | 2008-02-08 | 2008-02-08 |  |  |  | 133d |  |  |  |  |  |
| 243 | 15.3 | **ランチャー** | 98d? | 2008-02-08 | 2008-05-15 |  |  |  | 36d |  |  | 川瀬 智広; 荒木 勉 | 1120h |  |
| 244 | 15.3.1 | 実装 | 83d? | 2008-02-08 | 2008-04-30 |  |  |  | 51d |  | start no earlier than 2008-02-08 |  |  |  |
| 245 | 15.3.2 | デバッグ | 31d? | 2008-04-15 | 2008-05-15 |  |  |  | 36d |  | finish no earlier than 2008-05-15 |  |  |  |

| ID | WBS | Task | Duration | Start | Finish | Predecessors | Total slack | Free slack | Constraint | Resources | Work |
| --- | --- | --- | --- | --- | --- | --- | --- | --- | --- | --- | --- |
| 246 | 15.4 | **本体設定** | 112d? | 2008-02-08 | 2008-05-29 |  | 22d |  |  | 小野沢祐貴 | 640h |
| 247 | 15.4.1 | 実装 | 83d? | 2008-03-08 | 2008-05-29 | 226, 227 | 22d |  | start no earlier than 2008-02-08 |  |  |
| 248 | 15.4.2 | WiFi設定 | 36d? | 2008-02-08 | 2008-03-14 |  | 98d |  | start no earlier than 2008-02-08 |  |  |
| 249 | 15.4.3 | デバッグ | 31d? | 2008-04-15 | 2008-05-15 |  | 36d |  | finish no earlier than 2008-05-15 |  |  |
| 250 | 15.5 | **ショップ** | 98d? | 2008-02-08 | 2008-05-15 |  | 36d |  |  | 中谷; 和田 | 1120h |
| 251 | 15.5.1 | 実装 | 83d? | 2008-02-08 | 2008-04-30 |  | 51d |  | start no earlier than 2008-02-08 |  |  |
| 252 | 15.5.2 | デバッグ | 31d? | 2008-04-15 | 2008-05-15 |  | 36d |  | finish no earlier than 2008-05-15 |  |  |
| 253 | 15.6 | **写真帳** | 98d? | 2008-02-08 | 2008-05-15 |  | 36d |  |  | 河野裕之 | 560h |
| 254 | 15.6.1 | 実装 | 83d? | 2008-02-08 | 2008-04-30 |  | 51d |  | start no earlier than 2008-02-08 |  |  |
| 255 | 15.6.2 | デバッグ | 31d? | 2008-04-15 | 2008-05-15 |  | 36d |  | finish no earlier than 2008-05-15 |  |  |
| 256 | 15.7 | **ピクトチャット** | 98d? | 2008-02-08 | 2008-05-15 |  | 36d |  |  | 川瀬 智広; 荒木 勉 | 1120h |
| 257 | 15.7.1 | 実装 | 83d? | 2008-02-08 | 2008-04-30 |  | 51d |  | start no earlier than 2008-02-08 |  |  |
| 258 | 15.7.2 | デバッグ | 31d? | 2008-04-15 | 2008-05-15 |  | 36d |  | finish no earlier than 2008-05-15 |  |  |
| 259 | 15.8 | **DSダウンロードプレイ** | 98d? | 2008-02-08 | 2008-05-15 |  | 36d |  |  | 川瀬 智広; 荒木 勉 | 1120h |
| 260 | 15.8.1 | 実装 | 83d? | 2008-02-08 | 2008-04-30 |  | 51d |  | start no earlier than 2008-02-08 |  |  |
| 261 | 15.8.2 | デバッグ | 31d? | 2008-04-15 | 2008-05-15 |  | 36d |  | finish no earlier than 2008-05-15 |  |  |
| 262 | 15.9 | **新型配信システム** | 98d? | 2008-02-08 | 2008-05-15 |  | 36d |  |  | ネットワーク開発部 | 560h |
| 263 | 15.9.1 | 実装 | 83d? | 2008-02-08 | 2008-04-30 |  | 51d |  | start no earlier than 2008-02-08 |  |  |
| 264 | 15.9.2 | デバッグ | 31d? | 2008-04-15 | 2008-05-15 |  | 36d |  | finish no earlier than 2008-05-15 |  |  |
| 266 | 16 | **ROMマスター作成** | 51d? | 2008-02-08 | 2008-03-30 |  | 83d |  |  |  | 456h |
| 267 | 16.1 | ROMマスタリングツール | 22d? | 2008-02-08 | 2008-03-10 |  | 102d |  | start no earlier than 2008-02-08 | 西川猛司 | 176h |
| 268 | 16.2 | TWLカードのTWL領域用キーテーブル生成ツール | 35d | 2008-02-11 | 2008-03-30 | 19, 22SF | 83d |  |  | 中島高伸 | 280h |
| 270 | 17 | **デバッグ関係** | 25d? | 2008-04-01 | 2008-04-25 |  | 56d |  |  |  |  |
| 271 | 17.1 | 必要となるプログラム洗い出し | 4d? | 2008-04-01 | 2008-04-04 |  | 58d | 2d | finish no earlier than 2008-04-04 |  |  |
| 272 | 17.2 | テストプログラム作成 | 19d? | 2008-04-07 | 2008-04-25 | 271 | 56d |  | start no earlier than 2008-04-07 |  |  |

| ID | WBS | Task | Duration | Start | Finish | Predecessors | Complete | Remaining | Total slack | Free slack | Constraint | Resources | Work | Actual work |
| --- | --- | --- | --- | --- | --- | --- | --- | --- | --- | --- | --- | --- | --- | --- |
| 274 | 18 | **生産工程用プログラム** | 42d? | 2008-04-01 A | 2008-05-13 |  | 4% | 40.2d? | 39d |  |  |  | 8h | 7.2h |
| 275 | 18.1 | **生産工程用RED仮ランチャー** | 22d | 2008-04-21 | 2008-05-13 |  |  |  | 39d |  |  |  |  |  |
| 276 | 18.1.1 | 仕様FIX | 10d | 2008-04-21 | 2008-04-30 |  |  |  | 41d | 2d | start no earlier than 2008-04-21 |  |  |  |
| 277 | 18.1.2 | 実装 | 10d | 2008-05-03 | 2008-05-13 | 276, 14SF-10d |  |  | 39d |  |  |  |  |  |
| 278 | 18.2 | SDカードダイレクトブート | 1d? | 2008-04-01 A | 2008-04-01 |  | 90% | 0.1d? | 80d |  |  | 村上豊 | 8h | 7.2h |
